# 乌局卧具项目-软件开发计划

Schedule from MS Project, 2018-03-29 to 2018-07-06.

## Calendars

- 标准: Mon-Fri 08:00-12:00, 13:00-17:00; Sat-Sun off. Exceptions (off unless hours are given): 2018-04-29 08:00-12:00, 13:00-17:00.

## Resources

| Resource |
| --- |
| 申波 |
| 吴维群 |
| 软件项目组 |
| 硬件项目组 |
| 赖远桥 |
| 李衍毅 |
| 汪东浩 |
| 李华强 |
| 李泽荣 |

## Schedule

| ID | WBS | Task | Duration | Start | Finish | Predecessors | Total slack | Free slack | Constraint | Resources | Work |
| --- | --- | --- | --- | --- | --- | --- | --- | --- | --- | --- | --- |
| 1 | 1 | **需求分析&技术储备** | 8d? | 2018-03-29 | 2018-04-09 |  | 65d |  |  |  | 112h |
| 2 | 1.1 | 标签写卡优化代码研究 | 2d | 2018-03-29 | 2018-03-30 |  | 68d | 0d | start no earlier than 2018-03-29 | 李衍毅 | 16h |
| 3 | 1.2 | 通道机需求分析（含硬件接口）及方案 | 2d | 2018-03-29 | 2018-03-30 |  | 65d | 0d | start no earlier than 2018-03-29 | 汪东浩 | 16h |
| 4 | 1.3 | Impinj读写器API编码研究 | 4d | 2018-04-02 | 2018-04-05 | 3 | 65d | 0d | start no earlier than 2018-03-29 | 汪东浩 | 32h |
| 5 | 1.4 | 桌面打包台软件需求分析 | 1d? | 2018-04-02 | 2018-04-02 | 2 | 67d | 0d |  | 李衍毅 | 8h |
| 6 | 1.5 | 查询网站需求分析 | 2d | 2018-04-03 | 2018-04-04 | 5 | 67d | 0d |  | 李衍毅 | 16h |
| 7 | 1.6 | 数据库需求分析（分布式、海量、可远程升级） | 2d | 2018-04-06 | 2018-04-09 | 4 | 65d |  |  | 汪东浩 | 16h |
| 8 | 1.7 | 标签格式升级方案 | 1d | 2018-04-05 | 2018-04-05 | 6 | 67d |  |  | 李衍毅 | 8h |
| 9 | 2 | **方案增补** | 5d | 2018-04-05 | 2018-04-11 |  | 60d |  |  |  | 64h |
| 10 | 2.1 | 卧具全流程业务方案补充 | 2d | 2018-04-05 | 2018-04-06 |  | 61d | 0d | start no earlier than 2018-04-05 | 汪东浩 | 16h |
| 11 | 2.2 | 软件系统架构方案 | 1d | 2018-04-09 | 2018-04-09 | 10 | 60d | 0d |  | 汪东浩; 李衍毅 | 16h |
| 12 | 2.3 | 数据库、存储、服务器方案 | 2d | 2018-04-10 | 2018-04-11 | 11 | 60d | 0d |  | 汪东浩; 李衍毅 | 32h |
| 13 | 3 | **原型概要设计&UI设计** | 8d? | 2018-04-05 | 2018-04-16 |  | 60d |  |  |  | 120h |
| 14 | 3.1 | 桌面打包台软件原型概要设计及文档 | 2d | 2018-04-05 | 2018-04-06 |  | 65d | 5d | start no earlier than 2018-04-05 | 李衍毅 | 16h |
| 15 | 3.2 | 查询网站软件原型概要设计及文档 | 3d | 2018-04-09 | 2018-04-11 |  | 62d | 2d | start no earlier than 2018-04-09 | 李衍毅 | 24h |
| 16 | 3.3 | 通道机软件原型概要设计及文档 | 2d | 2018-04-12 | 2018-04-13 | 12 | 60d | 0d |  | 汪东浩 | 16h |
| 17 | 3.4 | 标签注册软件(TrainWash.Desktop)原型概要设计文档补充 | 1d? | 2018-04-10 | 2018-04-10 |  | 63d | 3d | start no earlier than 2018-04-10 | 李衍毅 | 8h |
| 18 | 3.5 | 整合系统各文档提交外协UI设计 | 1d? | 2018-04-16 | 2018-04-16 | 14, 15, 16, 17 | 60d |  |  | 赖远桥 | 8h |
| 19 | 3.6 | 需求及原型-阶段评审 | 1d | 2018-04-13 | 2018-04-13 |  | 58d | 0d | start no earlier than 2018-04-13 | 赖远桥; 申波; 李衍毅; 汪东浩; 吴维群; 李泽荣 | 48h |
| 20 | 4 | **数据库设计(多地通用、海量、分布式)** | 3d? | 2018-04-16 | 2018-04-18 |  | 58d |  |  |  | 48h |
| 21 | 4.1 | 数据库PowerDesigner设计及文档导出 | 2d | 2018-04-16 | 2018-04-17 | 19 | 58d | 0d |  | 汪东浩; 李衍毅 | 32h |
| 22 | 4.2 | 既有数据库补充搭建 | 1d? | 2018-04-18 | 2018-04-18 | 21 | 58d |  |  | 汪东浩; 李衍毅 | 16h |
| 23 | 5 | **软件开发** | 41d? | 2018-04-11 | 2018-06-05 |  | 18d |  |  |  | 1088h |
| 24 | 5.1 | **桌面打包台软件开发** | 6d | 2018-04-11 | 2018-04-18 |  | 58d |  |  | 李衍毅 | 96h |
| 25 | 5.1.1 | 软件开发 | 4d | 2018-04-11 | 2018-04-16 |  | 58d | 0d | start no earlier than 2018-04-11 | 李衍毅 | 32h |
| 26 | 5.1.2 | 软硬件集成联调 | 2d | 2018-04-17 | 2018-04-18 | 25 | 58d |  |  | 李衍毅 | 16h |

| ID | WBS | Task | Duration | Start | Finish | Predecessors | Total slack | Free slack | Constraint | Resources | Work |
| --- | --- | --- | --- | --- | --- | --- | --- | --- | --- | --- | --- |
| 27 | 5.2 | **隧道机软件开发** | 27d | 2018-04-19 | 2018-05-24 |  | 12d |  |  | 汪东浩 | 432h |
| 28 | 5.2.1 | 隧道机应用软件开发 | 9d | 2018-04-19 | 2018-04-30 |  | 12d | 0d | start no earlier than 2018-04-19 | 汪东浩 | 72h |
| 29 | 5.2.2 | 隧道机硬件通讯开发 | 8d | 2018-05-01 | 2018-05-10 | 28 | 12d | 0d | finish no earlier than 2018-04-11 | 汪东浩 | 64h |
| 30 | 5.2.3 | 隧道机硬件对接调试 | 6d | 2018-05-11 | 2018-05-18 | 29 | 12d | 0d | finish no earlier than 2018-04-18 | 汪东浩 | 48h |
| 31 | 5.2.4 | 隧道机软件硬件、服务等集成联调 | 4d | 2018-05-21 | 2018-05-24 | 30 | 12d | 0d | start no earlier than 2018-04-19 | 汪东浩 | 32h |
| 32 | 5.3 | **网站应用开发** | 35d? | 2018-04-19 | 2018-06-05 |  | 23d |  |  | 李衍毅 | 536h |
| 33 | 5.3.1 | 网站框架搭建 | 3d? | 2018-04-19 | 2018-04-23 |  | 26d | 0d | start no earlier than 2018-04-19 | 李衍毅 | 24h |
| 34 | 5.3.2 | 用户和权限管理模块 | 3d? | 2018-04-24 | 2018-04-26 | 33 | 26d | 3d | start no earlier than 2018-04-16 | 李衍毅 | 24h |
| 35 | 5.3.3 | 供应车间库存查询、统计模块 | 5d | 2018-05-01 | 2018-05-07 | 34 | 23d | 0d | start no earlier than 2018-05-01 | 李衍毅 | 40h |
| 36 | 5.3.4 | 洗涤车间库存查询、统计模块 | 5d | 2018-05-08 | 2018-05-14 | 35 | 23d | 0d | start no earlier than 2018-05-04 | 李衍毅 | 40h |
| 37 | 5.3.5 | 洗涤车间接车任务查询、统计模块 | 5d | 2018-05-15 | 2018-05-21 | 36 | 23d | 0d | start no earlier than 2018-05-11 | 李衍毅 | 40h |
| 38 | 5.3.6 | 洗涤车间统计报表模块 | 5d | 2018-05-22 | 2018-05-28 | 37 | 23d | 0d | start no earlier than 2018-05-18 | 李衍毅 | 40h |
| 39 | 5.3.7 | 财务科统计报表模块 | 4d | 2018-05-29 | 2018-06-01 | 38 | 23d | 0d | start no earlier than 2018-05-25 | 李衍毅 | 32h |
| 40 | 5.3.8 | 网站自测试 | 2d | 2018-06-04 | 2018-06-05 | 39 | 23d |  | finish no earlier than 2018-04-25 | 李衍毅 | 16h |
| 41 | 5.4 | 服务端接口代码开发测试 | 3d | 2018-04-27 | 2018-04-30 |  | 49d |  | start no earlier than 2018-04-27 | 李衍毅 | 24h |
| 42 | 6 | 手持机软件改进优化 | 20d | 2018-03-30 | 2018-04-26 |  | 52d |  | start no earlier than 2018-03-30 | 吴维群; 李泽荣 | 320h |
| 43 | 7 | 软件系统内部集成模拟测试 | 3d | 2018-05-25 | 2018-05-29 | 31 | 12d | 0d | start no earlier than 2018-05-04 | 汪东浩; 吴维群; 李衍毅; 李泽荣 | 96h |
| 44 | 8 | 软件开发阶段评审 | 1d? | 2018-05-30 | 2018-05-30 | 43 | 12d | 0d | start no earlier than 2018-05-09 | 赖远桥; 申波; 李衍毅; 汪东浩; 吴维群; 李泽荣 | 48h |
| 45 | 9 | **测试** | 15d | 2018-05-31 | 2018-06-20 | 44 | 12d |  |  |  | 704h |
| 46 | 9.1 | 测试方案、集成测试及各软件单元测试用例设计文档 | 3d | 2018-05-31 | 2018-06-04 |  | 12d | 0d | start no earlier than 2018-05-10 | 汪东浩; 吴维群; 李衍毅; 李泽荣 | 96h |
| 47 | 9.2 | 用户手册 | 2d | 2018-05-31 | 2018-06-01 |  | 25d |  | start no earlier than 2018-05-14 | 汪东浩; 吴维群; 李衍毅; 李泽荣 | 64h |
| 48 | 9.3 | 各单元测试 | 2d | 2018-06-05 | 2018-06-06 | 46 | 12d | 0d | start no earlier than 2018-05-16 | 汪东浩; 吴维群; 李衍毅; 李泽荣 | 64h |
| 49 | 9.4 | **系统集成测试** | 9d | 2018-06-07 | 2018-06-19 | 48 | 12d |  |  |  | 432h |
| 50 | 9.4.1 | 系统集成第一轮测试 | 1d | 2018-06-07 | 2018-06-07 |  | 12d | 0d | start no earlier than 2018-05-18 | 赖远桥; 申波; 李衍毅; 汪东浩; 吴维群; 李泽荣 | 48h |
| 51 | 9.4.2 | 软硬件修改 | 2d | 2018-06-08 | 2018-06-11 | 50 | 12d | 0d | start no earlier than 2018-05-21 | 赖远桥; 申波; 李衍毅; 汪东浩; 吴维群; 李泽荣 | 96h |
| 52 | 9.4.3 | 系统集成第二轮测试 | 1d | 2018-06-12 | 2018-06-12 | 51 | 12d | 0d | start no earlier than 2018-05-17 | 赖远桥; 申波; 李衍毅; 汪东浩; 吴维群; 李泽荣 | 48h |
| 53 | 9.4.4 | 软硬件修改 | 2d | 2018-06-13 | 2018-06-14 | 52 | 12d | 0d | start no earlier than 2018-05-24 | 赖远桥; 申波; 李衍毅; 汪东浩; 吴维群; 李泽荣 | 96h |
| 54 | 9.4.5 | 系统集成第三轮测试 | 1d | 2018-06-15 | 2018-06-15 | 53 | 12d | 0d | start no earlier than 2018-05-28 | 赖远桥; 申波; 李衍毅; 汪东浩; 吴维群; 李泽荣 | 48h |
| 55 | 9.4.6 | 软硬件修改 | 2d | 2018-06-18 | 2018-06-19 | 54 | 12d | 0d | start no earlier than 2018-05-29 | 赖远桥; 申波; 李衍毅; 汪东浩; 吴维群; 李泽荣 | 96h |
| 56 | 9.5 | 测试文档整理及测试阶段评审 | 1d | 2018-06-20 | 2018-06-20 | 55 | 12d |  | finish no earlier than 2018-05-31 | 赖远桥; 申波; 李衍毅; 汪东浩; 吴维群; 李泽荣 | 48h |

| ID | WBS | Task | Duration | Start | Finish | Predecessors | Total slack | Constraint | Resources | Work |
| --- | --- | --- | --- | --- | --- | --- | --- | --- | --- | --- |
| 57 | 10 | **出差部署试运行** | 24d | 2018-06-01 | 2018-07-04 |  | 0d |  |  | 832h |
| 58 | 10.1 | 培训资料 | 2d | 2018-06-01 | 2018-06-04 |  | 24d | finish no earlier than 2018-06-04 | 赖远桥; 申波; 李衍毅; 汪东浩; 吴维群; 李泽荣 | 96h |
| 59 | 10.2 | 部署方案&现场试运行方案 | 2d | 2018-06-01 | 2018-06-04 |  | 0d | start no earlier than 2018-06-01 | 赖远桥; 汪东浩 | 32h |
| 60 | 10.3 | 现场部署测试、现场修改 | 22d | 2018-06-05 | 2018-07-04 | 59 | 0d |  | 汪东浩; 吴维群; 李衍毅; 李泽荣 | 704h |
| 61 | 11 | **归档** | 2d? | 2018-07-05 | 2018-07-06 |  | 0d |  |  | 96h |
| 62 | 11.1 | 资料归档SOS | 1d? | 2018-07-05 | 2018-07-05 | 60 | 0d |  | 赖远桥; 申波; 李衍毅; 汪东浩; 吴维群; 李泽荣 | 48h |
| 63 | 11.2 | 归档评审 | 1d? | 2018-07-06 | 2018-07-06 | 62 | 0d |  | 赖远桥; 申波; 李衍毅; 汪东浩; 吴维群; 李泽荣 | 48h |
